# 8 - Deployment Guidance - Project Milestones

Schedule from MS Project, 2014-11-03 to 2014-12-09.

## Calendars

- Standard: Mon-Fri 08:00-12:00, 13:00-17:00; Sat-Sun off.

## Resources

| Resource | Group |
| --- | --- |
| Project Sponsor | Customer |
| IT Consultant | Partner |
| Engagement Manager | Partner |
| Microsoft Partner Technical Consultant | MS |
| Developer Consultant | Partner |
| Project Manager | Customer |
| Infrastructure Lead | Customer |
| DBA Consultant | Partner |
| DBA Lead | Customer |
| Application Owner | Customer |

## Schedule

| ID | WBS | Task | Type | Duration | Start | Finish | Predecessors | Total slack | Free slack | Constraint | Resources | Work |
| --- | --- | --- | --- | --- | --- | --- | --- | --- | --- | --- | --- | --- |
| 1 | 1 | **Backup & Archiving Pre-Sales Engagement** |  | 8.7d | 2014-11-03 08:00 | 2014-11-13 14:36 |  | 7d | 0d |  |  | 84.8h |
| 2 | 1.1 | **Governance** |  | 8.7d | 2014-11-03 08:00 | 2014-11-13 14:36 |  | 7d |  |  |  | 84.8h |
| 3 | 1.1.1 | Engagement management |  | 3d | 2014-11-03 08:00 | 2014-11-05 17:00 |  | 7d | 0d |  | Engagement Manager [10%] | 2.4h |
| 4 | 1.1.2 | **Envision** |  | 1.2d | 2014-11-06 08:00 | 2014-11-07 09:36 |  | 7d | 0d |  |  | 26.4h |
| 5 | 1.1.2.1 | Pre-Engagement preparation |  | 0.5d | 2014-11-06 08:00 | 2014-11-06 12:00 | 3 | 7d | 0d |  | IT Consultant; Project Manager | 8h |
| 6 | 1.1.2.2 | Engagement kickoff |  | 0.1d | 2014-11-06 13:00 | 2014-11-06 13:48 | 5 | 7d | 0d |  | Developer Consultant; Engagement Manager; Infrastructure Lead; IT Consultant; Microsoft Partner Technical Consultant; Project Manager; Project Sponsor | 5.6h |
| 7 | 1.1.2.3 | Solution Alignment and Value Proposition |  | 0.2d | 2014-11-06 13:48 | 2014-11-06 15:24 | 6 | 7d | 0d |  | Engagement Manager; Project Sponsor; Application Owner | 4.8h |
| 8 | 1.1.2.4 | Microsoft Partner Technical Consultant Check-in | milestone | 0d | 2014-11-06 15:24 | 2014-11-06 15:24 | 7 | 7d | 0d |  | Application Owner; Infrastructure Lead; Microsoft Partner Technical Consultant |  |
| 9 | 1.1.2.5 | Cost Planning |  | 0.2d | 2014-11-06 15:24 | 2014-11-06 17:00 | 8 | 7d | 0d |  | IT Consultant; Engagement Manager | 3.2h |
| 10 | 1.1.2.6 | Backup & Archiving Strategy and Operations Assessment |  | 0.2d | 2014-11-07 08:00 | 2014-11-07 09:36 | 9 | 7d |  |  | IT Consultant; Infrastructure Lead; Application Owner | 4.8h |
| 11 | 1.1.3 | **Plan** |  | 4.5d | 2014-11-07 09:36 | 2014-11-13 14:36 | 4 | 7d |  |  |  | 56h |
| 12 | 1.1.3.1 | Microsoft Partner Technical Consultant Check-in | milestone | 0d | 2014-11-07 09:36 | 2014-11-07 09:36 |  | 7d | 0d | start no earlier than 2014-01-09 08:00 | IT Consultant; Microsoft Partner Technical Consultant; Application Owner |  |
| 13 | 1.1.3.2 | Architecture |  | 0.5d | 2014-11-07 09:36 | 2014-11-07 14:36 | 12 | 7d | 0d |  | Infrastructure Lead; IT Consultant | 8h |
| 14 | 1.1.3.3 | **Proof of Concept** |  | 3.5d | 2014-11-07 14:36 | 2014-11-13 09:36 |  | 7d |  |  |  | 40h |
| 15 | 1.1.3.3.1 | Configure Microsoft Azure |  | 0.5d | 2014-11-07 14:36 | 2014-11-10 09:36 | 13 | 7d | 0d |  | IT Consultant; Infrastructure Lead | 8h |
| 16 | 1.1.3.3.2 | Obtain a self-signed certificate |  | 0.25d | 2014-11-10 09:36 | 2014-11-10 11:36 | 15 | 7d | 0d |  | IT Consultant | 2h |
| 17 | 1.1.3.3.3 | Export a Certificate (.pfx) |  | 0.25d | 2014-11-10 11:36 | 2014-11-10 14:36 | 16 | 7d | 0d |  | IT Consultant | 2h |
| 18 | 1.1.3.3.4 | Import the Certificate |  | 0.25d | 2014-11-10 14:36 | 2014-11-10 16:36 | 17 | 7d | 0d |  | IT Consultant | 2h |
| 19 | 1.1.3.3.5 | Create a backup vault |  | 0.25d | 2014-11-10 16:36 | 2014-11-11 09:36 | 18 | 7d | 0d |  | IT Consultant | 2h |
| 20 | 1.1.3.3.6 | Upload a certificate |  | 0.25d | 2014-11-11 09:36 | 2014-11-11 11:36 | 19, 16 | 7d | 0d |  | IT Consultant | 2h |
| 21 | 1.1.3.3.7 | Download a Backup Agent |  | 0.25d | 2014-11-11 11:36 | 2014-11-11 14:36 | 20 | 7d | 0d |  | IT Consultant | 2h |
| 22 | 1.1.3.3.8 | Install the Windows Azure Backup Agent |  | 0.5d | 2014-11-11 14:36 | 2014-11-12 09:36 | 21 | 7d | 0d |  | IT Consultant | 4h |
| 23 | 1.1.3.3.9 | Demonstrate backup in a isolated enviroment |  | 0.5d | 2014-11-12 09:36 | 2014-11-12 14:36 | 22 | 7d | 0d |  | IT Consultant; Infrastructure Lead | 8h |
| 24 | 1.1.3.3.10 | Demonstrate restore in a isolated enviroment |  | 0.5d | 2014-11-12 14:36 | 2014-11-13 09:36 | 23 | 7d | 0d |  | IT Consultant; Infrastructure Lead | 8h |
| 25 | 1.1.3.4 | Func spec dev |  | 0.5d | 2014-11-13 09:36 | 2014-11-13 14:36 | 24 | 7d |  | start no earlier than 2014-01-09 08:00 | IT Consultant; Infrastructure Lead | 8h |
| 26 | 1.1.3.5 | Design complete | milestone | 0d | 2014-11-07 09:36 | 2014-11-07 09:36 |  | 11.5d |  | start no earlier than 2014-01-10 08:00 |  |  |

| ID | WBS | Task | Type | Duration | Start | Finish | Predecessors | Total slack | Free slack | Constraint | Resources | Work |
| --- | --- | --- | --- | --- | --- | --- | --- | --- | --- | --- | --- | --- |
| 27 | 2 | **Backup & Archiving Deployment Engagement** |  | 18.2d | 2014-11-13 14:36 | 2014-12-09 16:12 | 1 | 0d |  |  |  | 178h |
| 28 | 2.1 | **Governance** |  | 5d | 2014-11-13 14:36 | 2014-11-20 14:36 |  | 13.2d |  |  |  | 4h |
| 29 | 2.1.1 | Engagement management |  | 5d | 2014-11-13 14:36 | 2014-11-20 14:36 |  | 13.2d |  |  | Engagement Manager [10%] | 4h |
| 30 | 2.2 | **Envision** |  | 1d | 2014-11-13 14:36 | 2014-11-14 14:36 |  | 7d | 0d |  |  | 8h |
| 31 | 2.2.1 | Pre-project preparation |  | 0.5d | 2014-11-13 14:36 | 2014-11-14 09:36 |  | 7d | 0d |  | IT Consultant | 4h |
| 32 | 2.2.2 | Project kickoff |  | 0.5d | 2014-11-14 09:36 | 2014-11-14 14:36 | 31 | 7d |  |  | IT Consultant | 4h |
| 33 | 2.2.3 | Microsoft Partner Technical Consultant Check-in | milestone | 0d | 2014-11-13 14:36 | 2014-11-13 14:36 |  | 8d |  |  | IT Consultant; Microsoft Partner Technical Consultant |  |
| 34 | 2.3 | **Plan** |  | 4.8d | 2014-11-14 14:36 | 2014-11-21 12:00 | 30 | 5.7d | 0d |  |  | 84h |
| 35 | 2.3.1 | **Infrastructure design** |  | 4.3d | 2014-11-14 14:36 | 2014-11-20 17:00 |  | 5.7d |  |  |  | 72h |
| 36 | 2.3.1.1 | Review of existing backup infrastructure deployment |  | 0.5d | 2014-11-14 14:36 | 2014-11-17 09:36 |  | 7d | 0d |  | IT Consultant; Infrastructure Lead; Project Manager | 12h |
| 37 | 2.3.1.2 | Identify file data dependencies (applications, devices, standard drive mappings and automation dependencies) |  | 0.5d | 2014-11-17 09:36 | 2014-11-17 14:36 | 36 | 7d | 0d |  | IT Consultant; Infrastructure Lead; Project Manager | 12h |
| 38 | 2.3.1.3 | Update current backup strategy and routine according new approach |  | 0.5d | 2014-11-17 14:36 | 2014-11-18 09:36 | 37 | 7d | 0d |  | IT Consultant; Infrastructure Lead; Project Manager | 12h |
| 39 | 2.3.1.4 | Update architectural design templates according proposed Cloud Backup Solution |  | 0.5d | 2014-11-18 09:36 | 2014-11-18 14:36 | 38 | 7d | 0d |  | IT Consultant; Infrastructure Lead; Project Manager | 12h |
| 40 | 2.3.1.5 | Determine protection strategy for each workload: Backup agent or SCPDM? |  | 0.5d | 2014-11-18 14:36 | 2014-11-19 09:36 | 39 | 7d | 1.3d |  | IT Consultant; Infrastructure Lead; Project Manager | 12h |
| 41 | 2.3.1.6 | Document high-level data backup plan |  | 0.5d | 2014-11-20 13:00 | 2014-11-20 17:00 | 40 | 5.7d | 0d | finish no earlier than 2014-11-20 17:00 | Project Manager; Infrastructure Lead; IT Consultant | 12h |
| 42 | 2.3.2 | Func spec dev |  | 0.5d | 2014-11-21 08:00 | 2014-11-21 12:00 | 41 | 5.7d |  |  | IT Consultant; Infrastructure Lead; Project Manager | 12h |
| 43 | 2.3.3 | Microsoft Partner Technical Consultant Check-in | milestone | 0d | 2014-11-14 14:36 | 2014-11-14 14:36 |  | 10.5d |  |  | IT Consultant; Microsoft Partner Technical Consultant; Application Owner |  |
| 44 | 2.3.4 | Design complete | milestone | 0d | 2014-11-14 14:36 | 2014-11-14 14:36 |  | 10.5d |  |  |  |  |
| 45 | 2.4 | **Build** |  | 9.7d | 2014-11-21 13:00 | 2014-12-05 09:36 | 34 | 2.7d |  |  |  | 34h |
| 46 | 2.4.1 | Validate customer Azure account availability |  | 0.5d | 2014-11-21 13:00 | 2014-11-21 17:00 |  | 7.45d | 6.2d |  | IT Consultant; Infrastructure Lead | 8h |
| 47 | 2.4.2 | Enable and Configure Azure Connectivity, Storage Account and Backup Vaults |  | 0.5d | 2014-11-24 08:00 | 2014-11-24 12:00 |  | 11.4d |  |  | IT Consultant | 4h |
| 48 | 2.4.3 | **Deploy and Configure Windows Azure Backup** |  | 3d | 2014-12-02 09:36 | 2014-12-05 09:36 |  |  |  |  |  | 14h |
| 49 | 2.4.3.1 | Create admin and co-admins |  | 0.25d | 2014-12-02 09:36 | 2014-12-02 11:36 | 46 | 1.25d | 0d |  | IT Consultant | 2h |
| 50 | 2.4.3.2 | Create an backup Vault |  | 0.25d | 2014-12-02 11:36 | 2014-12-02 14:36 | 49 | 1.25d | 0d |  | IT Consultant | 2h |
| 51 | 2.4.3.3 | Create and upload the x.509 v3 certificate |  | 0.25d | 2014-12-02 14:36 | 2014-12-02 16:36 | 50 | 1.25d | 0d |  | IT Consultant | 2h |
| 52 | 2.4.3.4 | Download and install Backup Agent |  | 0.25d | 2014-12-02 16:36 | 2014-12-03 09:36 | 51 | 1.25d | 0d |  | IT Consultant | 2h |
| 53 | 2.4.3.5 | Configure backup schedule and backup agent settings |  | 0.25d | 2014-12-03 09:36 | 2014-12-03 11:36 | 52 | 1.25d | 0d |  | IT Consultant | 2h |
| 54 | 2.4.3.6 | Validate recovery for Backup Agent strategy |  | 0.5d | 2014-12-03 11:36 | 2014-12-03 16:36 | 53 | 1.25d |  |  | IT Consultant | 4h |

| ID | WBS | Task | Type | Duration | Start | Finish | Predecessors | Total slack | Resources | Work |
| --- | --- | --- | --- | --- | --- | --- | --- | --- | --- | --- |
| 55 | 2.4.4 | **Deploy and Configure Windows Azure Backup with System Center 2012 - Data Protection Manager** |  | 3d | 2014-12-01 09:36 | 2014-12-04 09:36 |  |  |  | 8h |
| 56 | 2.4.4.1 | Installing the Windows Azure Backup Agent |  | 0.25d | 2014-12-01 09:36 | 2014-12-01 11:36 | 41 | 2.75d | IT Consultant | 2h |
| 57 | 2.4.4.2 | Register DPM Server |  | 0.25d | 2014-12-01 09:36 | 2014-12-01 11:36 | 42 | 2.75d | IT Consultant | 2h |
| 58 | 2.4.4.3 | Configure backup schedule and SCDPM settings |  | 0.25d | 2014-12-01 09:36 | 2014-12-01 11:36 | 43 | 2.75d | IT Consultant | 2h |
| 59 | 2.4.4.4 | Validate recovery for SCDPM strategy |  | 0.25d | 2014-12-01 09:36 | 2014-12-01 11:36 | 44 | 2.75d | IT Consultant | 2h |
| 60 | 2.4.5 | Microsoft Partner Technical Consultant Check-in | milestone | 0d | 2014-12-03 09:36 | 2014-12-03 09:36 | 52 | 4.7d | IT Consultant; Microsoft Partner Technical Consultant; Application Owner; Developer Consultant |  |
| 61 | 2.4.6 | Solution built | milestone | 0d | 2014-12-05 09:36 | 2014-12-05 09:36 | 48 | 0d |  |  |
| 62 | 2.5 | **Stabilize** |  | 1d | 2014-12-05 09:36 | 2014-12-08 09:36 | 61 | 0d |  | 14.4h |
| 63 | 2.5.1 | Validate Azure Backup, SCDPM and Azure Storage Installation |  | 0.2d | 2014-12-05 09:36 | 2014-12-05 11:12 |  | 0.8d | IT Consultant | 1.6h |
| 64 | 2.5.2 | Validate data storage and accessibility in Windows Azure Storage |  | 0.2d | 2014-12-05 09:36 | 2014-12-05 11:12 |  | 0.8d | IT Consultant | 1.6h |
| 65 | 2.5.3 | Validate backup and recovery functions |  | 0.2d | 2014-12-05 09:36 | 2014-12-05 11:12 |  | 0.8d | IT Consultant | 1.6h |
| 66 | 2.5.4 | Validate basic operations configuration (reporting, alerting, etc.) |  | 0.2d | 2014-12-05 09:36 | 2014-12-05 11:12 |  | 0.8d | IT Consultant | 1.6h |
| 67 | 2.5.5 | Knowledge Transfer / Demos to customer |  | 1d | 2014-12-05 09:36 | 2014-12-08 09:36 |  | 0d | IT Consultant; Infrastructure Lead | 8h |
| 68 | 2.5.6 | Backup Solution Validated and Supported | milestone | 0d | 2014-12-05 09:36 | 2014-12-05 09:36 |  | 1d | IT Consultant; Infrastructure Lead |  |
| 69 | 2.6 | **Deploy** |  | 1.7d | 2014-12-08 09:36 | 2014-12-09 16:12 | 62 | 0d |  | 33.6h |
| 70 | 2.6.1 | **Hand off to Operations** |  | 1.5d | 2014-12-08 09:36 | 2014-12-09 14:36 |  | 0d |  | 24h |
| 71 | 2.6.1.1 | Complete operational transition (configure monitoring, alerting, reporting, and data protection. Perform knowledge transfer and review support) |  | 0.5d | 2014-12-08 09:36 | 2014-12-08 14:36 |  | 0d | IT Consultant; Infrastructure Lead | 8h |
| 72 | 2.6.1.2 | Continue data protection efforts & turnover operational documentation to customer |  | 1d | 2014-12-08 14:36 | 2014-12-09 14:36 | 71 | 0d | IT Consultant; Infrastructure Lead | 16h |
| 73 | 2.6.2 | Project close out meeting |  | 0.2d | 2014-12-09 14:36 | 2014-12-09 16:12 | 70 | 0d | IT Consultant; Engagement Manager; Infrastructure Lead; Microsoft Partner Technical Consultant; Project Manager; Project Sponsor | 9.6h |
| 74 | 2.6.3 | Solution deployed | milestone | 0d | 2014-12-09 16:12 | 2014-12-09 16:12 | 73 | 0d |  |  |
