# 8 - Deployment Guidance - Project Milestones

Schedule from MS Project, 2014-11-03 to 2014-12-08.

## Calendars

- Standard: Mon-Fri 08:00-12:00, 13:00-17:00; Sat-Sun off.

## Resources

| Resource | Group |
| --- | --- |
| Project Sponsor | Customer |
| IT Consultant | Partner |
| Engagement Manager | Partner |
| Microsoft Partner Technical Consultant | MS |
| Developer Consultant | Partner |
| Project Manager | Customer |
| Infrastructure Lead | Customer |
| Lab Operations Lead | Customer |

## Schedule

| ID | WBS | Task | Type | Duration | Start | Finish | Predecessors | Total slack | Constraint | Resources | Work |
| --- | --- | --- | --- | --- | --- | --- | --- | --- | --- | --- | --- |
| 1 | 1 | **Dev / Test Pre-Sales Engagement** |  | 10.7d? | 2014-11-03 08:00 | 2014-11-17 14:36 |  | 0d |  |  | 156h |
| 2 | 1.1 | **Governance** |  | 10.7d? | 2014-11-03 08:00 | 2014-11-17 14:36 |  | 0d |  |  | 156h |
| 3 | 1.1.1 | Engagement management |  | 5d | 2014-11-03 08:00 | 2014-11-07 17:00 |  | 0d |  | Engagement Manager [10%] | 4h |
| 4 | 1.1.2 | **Envision** |  | 2.2d? | 2014-11-10 08:00 | 2014-11-12 09:36 |  | 0d |  |  | 24h |
| 5 | 1.1.2.1 | Pre-Engagement preparation |  | 0.5d | 2014-11-10 08:00 | 2014-11-10 12:00 | 3 | 0d |  | IT Consultant; Project Manager | 8h |
| 6 | 1.1.2.2 | Engagement kickoff |  | 0.1d | 2014-11-10 13:00 | 2014-11-10 13:48 | 5 | 0d |  | Developer Consultant; Engagement Manager; Infrastructure Lead; IT Consultant; Lab Operations Lead; Microsoft Partner Technical Consultant; Project Manager; Project Sponsor | 6.4h |
| 7 | 1.1.2.3 | Solution Value Proposition |  | 0.2d | 2014-11-10 13:48 | 2014-11-10 15:24 | 6 | 0d |  | Engagement Manager; Project Sponsor | 3.2h |
| 8 | 1.1.2.4 | Microsoft Partner Technical Consultant Check-in |  | 1d? | 2014-11-10 15:24 | 2014-11-11 15:24 | 7 | 0d |  |  |  |
| 9 | 1.1.2.5 | Cost Planning |  | 0.2d | 2014-11-11 15:24 | 2014-11-11 17:00 | 8 | 0d |  | Developer Consultant; Engagement Manager | 3.2h |
| 10 | 1.1.2.6 | Technical Assessment |  | 0.2d | 2014-11-12 08:00 | 2014-11-12 09:36 | 9 | 0d |  | Developer Consultant; Infrastructure Lead | 3.2h |
| 11 | 1.1.3 | **Plan** |  | 3.5d | 2014-11-12 09:36 | 2014-11-17 14:36 | 4 | 0d |  |  | 128h |
| 12 | 1.1.3.1 | Microsoft Partner Technical Consultant Check-in | milestone | 0d | 2014-11-12 09:36 | 2014-11-12 09:36 |  | 0d | start no earlier than 2014-01-09 08:00 | IT Consultant; Microsoft Partner Technical Consultant |  |
| 13 | 1.1.3.2 | Architecture |  | 0.5d | 2014-11-12 09:36 | 2014-11-12 14:36 | 12 | 0d |  | Developer Consultant; Infrastructure Lead | 8h |
| 14 | 1.1.3.3 | **Proof of Concept** |  | 2.5d | 2014-11-12 14:36 | 2014-11-17 09:36 |  | 0d |  |  | 100h |
| 15 | 1.1.3.3.1 | Configure Microsoft Azure |  | 0.5d | 2014-11-12 14:36 | 2014-11-13 09:36 | 13 | 0d |  | IT Consultant; Developer Consultant; Infrastructure Lead; Lab Operations Lead; Project Manager | 20h |
| 16 | 1.1.3.3.2 | Configure Domain Controller (if needed) |  | 0.5d | 2014-11-13 09:36 | 2014-11-13 14:36 | 15 | 0d |  | IT Consultant; Developer Consultant; Infrastructure Lead; Lab Operations Lead; Project Manager | 20h |
| 17 | 1.1.3.3.3 | Configure Web server |  | 0.5d | 2014-11-13 14:36 | 2014-11-14 09:36 | 16 | 0d |  | IT Consultant; Developer Consultant; Infrastructure Lead; Lab Operations Lead; Project Manager | 20h |
| 18 | 1.1.3.3.4 | Configure SQL Server Infrastructure |  | 0.5d | 2014-11-14 09:36 | 2014-11-14 14:36 | 17 | 0d |  | IT Consultant; Developer Consultant; Infrastructure Lead; Lab Operations Lead; Project Manager | 20h |
| 19 | 1.1.3.3.5 | Configure Deployment Strategy |  | 0.5d | 2014-11-14 14:36 | 2014-11-17 09:36 | 18 | 0d |  | IT Consultant; Developer Consultant; Infrastructure Lead; Lab Operations Lead; Project Manager | 20h |
| 20 | 1.1.3.4 | Func spec dev |  | 0.5d | 2014-11-17 09:36 | 2014-11-17 14:36 | 19 | 0d | start no earlier than 2014-01-09 08:00 | IT Consultant; Developer Consultant; Infrastructure Lead; Lab Operations Lead; Project Manager | 20h |
| 21 | 1.1.3.5 | Design complete | milestone | 0d | 2014-11-12 09:36 | 2014-11-12 09:36 |  | 3.5d | start no earlier than 2014-01-10 08:00 |  |  |
| 22 | 2 | **Dev / Test Deployment Engagement** |  | 15d | 2014-11-17 14:36 | 2014-12-08 14:36 | 1 | 0d |  |  | 348h |
| 23 | 2.1 | **Governance** |  | 15d | 2014-11-17 14:36 | 2014-12-08 14:36 |  | 0d |  |  | 12h |
| 24 | 2.1.1 | Engagement management |  | 15d | 2014-11-17 14:36 | 2014-12-08 14:36 |  | 0d |  | Engagement Manager [10%] | 12h |

| ID | WBS | Task | Type | Duration | Start | Finish | Predecessors | Total slack | Free slack | Resources | Work |
| --- | --- | --- | --- | --- | --- | --- | --- | --- | --- | --- | --- |
| 25 | 2.2 | **Envision** |  | 1d | 2014-11-17 14:36 | 2014-11-18 14:36 |  | 1d | 0d |  | 8h |
| 26 | 2.2.1 | Pre-project preparation |  | 0.5d | 2014-11-17 14:36 | 2014-11-18 09:36 |  | 1d | 0d | IT Consultant | 4h |
| 27 | 2.2.2 | Project kickoff |  | 0.5d | 2014-11-18 09:36 | 2014-11-18 14:36 | 26 | 1d |  | IT Consultant | 4h |
| 28 | 2.2.3 | Microsoft Partner Technical Consultant Check-in | milestone | 0d | 2014-11-17 14:36 | 2014-11-17 14:36 |  | 2d |  | IT Consultant; Microsoft Partner Technical Consultant |  |
| 29 | 2.3 | **Plan** |  | 3.5d | 2014-11-18 14:36 | 2014-11-24 09:36 | 25 | 1d | 0d |  | 140h |
| 30 | 2.3.1 | **Lab design workshop** |  | 2.5d | 2014-11-18 14:36 | 2014-11-21 09:36 |  | 1d | 0d |  | 100h |
| 31 | 2.3.1.1 | Microsoft Azure IaaS Configuration |  | 0.5d | 2014-11-18 14:36 | 2014-11-19 09:36 |  | 1d | 0d | IT Consultant; Developer Consultant; Infrastructure Lead; Lab Operations Lead; Project Manager | 20h |
| 32 | 2.3.1.2 | Active Directory Configuration (if needed) |  | 0.5d | 2014-11-19 09:36 | 2014-11-19 14:36 | 31 | 1d | 0d | IT Consultant; Developer Consultant; Infrastructure Lead; Lab Operations Lead; Project Manager | 20h |
| 33 | 2.3.1.3 | Web Server Configuration |  | 0.5d | 2014-11-19 14:36 | 2014-11-20 09:36 | 32 | 1d | 0d | IT Consultant; Developer Consultant; Infrastructure Lead; Lab Operations Lead; Project Manager | 20h |
| 34 | 2.3.1.4 | SQL Server Configuration |  | 0.5d | 2014-11-20 09:36 | 2014-11-20 14:36 | 33 | 1d | 0d | IT Consultant; Developer Consultant; Infrastructure Lead; Lab Operations Lead; Project Manager | 20h |
| 35 | 2.3.1.5 | Deployment Strategy |  | 0.5d | 2014-11-20 14:36 | 2014-11-21 09:36 | 34 | 1d |  | IT Consultant; Developer Consultant; Infrastructure Lead; Lab Operations Lead; Project Manager | 20h |
| 36 | 2.3.2 | Func spec dev |  | 1d | 2014-11-21 09:36 | 2014-11-24 09:36 | 30 | 1d |  | IT Consultant; Developer Consultant; Infrastructure Lead; Lab Operations Lead; Project Manager | 40h |
| 37 | 2.3.3 | Microsoft Partner Technical Consultant Check-in | milestone | 0d | 2014-11-18 14:36 | 2014-11-18 14:36 |  | 4.5d |  | IT Consultant; Microsoft Partner Technical Consultant |  |
| 38 | 2.3.4 | Design complete | milestone | 0d | 2014-11-18 14:36 | 2014-11-18 14:36 |  | 4.5d |  |  |  |
| 39 | 2.4 | **Build** |  | 5d | 2014-11-24 09:36 | 2014-12-01 09:36 | 29, 11 | 1d | 0d |  | 108h |
| 40 | 2.4.1 | **Lab infrastructure build** |  | 5d | 2014-11-24 09:36 | 2014-12-01 09:36 |  | 1d | 0d |  | 108h |
| 41 | 2.4.1.1 | Configure Microsoft Azure IaaS |  | 0.5d | 2014-11-24 09:36 | 2014-11-24 14:36 |  | 1d | 0d | IT Consultant; Infrastructure Lead | 8h |
| 42 | 2.4.1.2 | Configure Active Directory (if needed) |  | 1d | 2014-11-24 14:36 | 2014-11-25 14:36 | 41 | 1d | 0d | IT Consultant; Infrastructure Lead | 16h |
| 43 | 2.4.1.3 | Configure Web Server |  | 0.5d | 2014-11-25 14:36 | 2014-11-26 09:36 | 42 | 1d | 0d | Developer Consultant; Infrastructure Lead; IT Consultant | 12h |
| 44 | 2.4.1.4 | Configure SQL Server Infrastructure |  | 3d | 2014-11-26 09:36 | 2014-12-01 09:36 | 43 | 1d | 0d | IT Consultant; Developer Consultant; Infrastructure Lead | 72h |
| 45 | 2.4.2 | Microsoft Partner Technical Consultant Check-in | milestone | 0d | 2014-12-01 09:36 | 2014-12-01 09:36 | 44 | 1d |  | IT Consultant; Microsoft Partner Technical Consultant |  |
| 46 | 2.4.3 | Solution built | milestone | 0d | 2014-12-01 09:36 | 2014-12-01 09:36 | 40 | 1d |  |  |  |
| 47 | 2.5 | **Stabilize** |  | 1.5d | 2014-12-01 09:36 | 2014-12-02 14:36 | 39 | 1d | 0d |  | 24h |
| 48 | 2.5.1 | Connectivity validation |  | 0.5d | 2014-12-01 09:36 | 2014-12-01 14:36 |  | 1d | 0d | IT Consultant; Lab Operations Lead | 8h |
| 49 | 2.5.2 | Test Application |  | 1d | 2014-12-01 14:36 | 2014-12-02 14:36 | 48 | 1d |  | IT Consultant; Developer Consultant | 16h |
| 50 | 2.5.3 | Solution validated | milestone | 0d | 2014-12-01 09:36 | 2014-12-01 09:36 |  | 2.5d |  |  |  |

| ID | WBS | Task | Type | Duration | Start | Finish | Predecessors | Total slack | Free slack | Resources | Work |
| --- | --- | --- | --- | --- | --- | --- | --- | --- | --- | --- | --- |
| 51 | 2.6 | **Deploy** |  | 3d | 2014-12-02 14:36 | 2014-12-05 14:36 | 47 | 1d |  |  | 56h |
| 52 | 2.6.1 | **Hand off to dev ops** |  | 2.5d | 2014-12-02 14:36 | 2014-12-05 09:36 |  | 1d | 0d |  | 24h |
| 53 | 2.6.1.1 | Solution walk through with lab ops teams |  | 0.5d | 2014-12-02 14:36 | 2014-12-03 09:36 |  | 1d | 0d | IT Consultant; Lab Operations Lead | 8h |
| 54 | 2.6.1.2 | Go live support |  | 2d | 2014-12-03 09:36 | 2014-12-05 09:36 | 53 | 1d |  | IT Consultant | 16h |
| 55 | 2.6.2 | Project close out meeting |  | 0.5d | 2014-12-05 09:36 | 2014-12-05 14:36 | 52 | 1d | 0d | IT Consultant; Developer Consultant; Engagement Manager; Infrastructure Lead; Lab Operations Lead; Microsoft Partner Technical Consultant; Project Manager; Project Sponsor | 32h |
| 56 | 2.6.3 | Solution deployed | milestone | 0d | 2014-12-05 14:36 | 2014-12-05 14:36 | 55 | 1d |  |  |  |
