# 8 - Deployment Guidance - Project Milestones

Schedule from MS Project, 2014-11-03 to 2015-01-14.

## Calendars

- Standard: Mon-Fri 08:00-12:00, 13:00-17:00; Sat-Sun off.

## Resources

| Resource | Group |
| --- | --- |
| Project Sponsor | Customer |
| IT Consultant | Partner |
| Engagement Manager | Partner |
| Microsoft Partner Technical Consultant | MS |
| Back End Developer Consultant | Partner |
| Project Manager | Customer |
| Infrastructure Lead | Customer |
| DBA Consultant | Partner |
| DBA Lead | Customer |
| Application Owner | Customer |
| Mobile Developer Consultant | Partner |

## Schedule

| ID | WBS | Task | Type | Duration | Start | Finish | Predecessors | Total slack | Constraint | Resources | Work |
| --- | --- | --- | --- | --- | --- | --- | --- | --- | --- | --- | --- |
| 1 | 1 | **Mobile App Pre-Sales Engagement** |  | 20.7d | 2014-11-03 | 2014-12-01 |  | 0d |  |  | 483.2h |
| 2 | 1.1 | **Governance** |  | 20.7d | 2014-11-03 | 2014-12-01 |  | 0d |  |  | 483.2h |
| 3 | 1.1.1 | Engagement management |  | 5d | 2014-11-03 | 2014-11-07 |  | 0d |  | Engagement Manager [10%] | 4h |
| 4 | 1.1.2 | **Envision** |  | 1.2d | 2014-11-10 | 2014-11-11 |  | 0d |  |  | 51.2h |
| 5 | 1.1.2.1 | Pre-Engagement preparation |  | 0.5d | 2014-11-10 | 2014-11-10 | 3 | 0d |  | Project Manager; Application Owner; Back End Developer Consultant; Engagement Manager; Project Sponsor | 20h |
| 6 | 1.1.2.2 | Engagement kickoff |  | 0.1d | 2014-11-10 | 2014-11-10 | 5 | 0d |  | Back End Developer Consultant; Engagement Manager; Infrastructure Lead; IT Consultant; Microsoft Partner Technical Consultant; Project Manager; Project Sponsor; Application Owner; DBA Consultant; DBA Lead; Mobile Developer Consultant | 8.8h |
| 7 | 1.1.2.3 | Solution Value Proposition |  | 0.2d | 2014-11-10 | 2014-11-10 | 6 | 0d |  | Engagement Manager; Project Sponsor; Application Owner; Back End Developer Consultant | 6.4h |
| 8 | 1.1.2.4 | Microsoft Partner Technical Consultant Check-in | milestone | 0d | 2014-11-10 | 2014-11-10 | 7 | 0d |  | Application Owner; Microsoft Partner Technical Consultant; Back End Developer Consultant; Engagement Manager |  |
| 9 | 1.1.2.5 | Cost Estimation |  | 0.2d | 2014-11-10 | 2014-11-10 | 8 | 0d |  | Back End Developer Consultant; Application Owner; Mobile Developer Consultant | 4.8h |
| 10 | 1.1.2.6 | Application Migration Technical Assessment |  | 0.2d | 2014-11-11 | 2014-11-11 | 9 | 0d |  | Back End Developer Consultant; Infrastructure Lead; Application Owner; DBA Consultant; DBA Lead; IT Consultant; Mobile Developer Consultant | 11.2h |
| 11 | 1.1.3 | **Plan** |  | 14.5d | 2014-11-11 | 2014-12-01 | 4 | 0d |  |  | 428h |
| 12 | 1.1.3.1 | Microsoft Partner Technical Consultant Check-in | milestone | 0d | 2014-11-11 | 2014-11-11 |  | 0d | start no earlier than 2014-01-09 | Back End Developer Consultant; Mobile Developer Consultant; Infrastructure Lead; Application Owner; DBA Consultant; DBA Lead; IT Consultant |  |
| 13 | 1.1.3.2 | Architecture |  | 0.5d | 2014-11-11 | 2014-11-11 | 12 | 0d |  | Back End Developer Consultant; Infrastructure Lead; Application Owner; DBA Consultant; DBA Lead; IT Consultant; Mobile Developer Consultant | 28h |
| 14 | 1.1.3.3 | **Proof of Concept** |  | 13d | 2014-11-11 | 2014-11-28 |  | 0d |  |  | 376h |
| 15 | 1.1.3.3.1 | Plan and Configure Microsoft Azure |  | 0.5d | 2014-11-11 | 2014-11-12 | 13 | 0d |  | Back End Developer Consultant; Infrastructure Lead | 8h |
| 16 | 1.1.3.3.2 | Plan and Configure Storage Account |  | 0.5d | 2014-11-12 | 2014-11-12 | 15 | 0d |  | IT Consultant; Back End Developer Consultant | 8h |
| 17 | 1.1.3.3.3 | Plan and Configure Azure Mobile Services |  | 2d | 2014-11-12 | 2014-11-14 | 16 | 0d |  | Back End Developer Consultant; Mobile Developer Consultant; Application Owner | 48h |
| 18 | 1.1.3.3.4 | Plan and Configure Azure SQL Database |  | 2d | 2014-11-14 | 2014-11-18 | 17 | 0d |  | DBA Lead; DBA Consultant; Application Owner; Back End Developer Consultant; Mobile Developer Consultant | 80h |
| 19 | 1.1.3.3.5 | Plan and Configure Notification Hubs |  | 1d | 2014-11-18 | 2014-11-19 | 18 | 0d |  | Application Owner; Back End Developer Consultant; Mobile Developer Consultant | 24h |
| 20 | 1.1.3.3.6 | Plan and Confiure App Service |  | 2d | 2014-11-19 | 2014-11-21 | 19 | 0d |  | IT Consultant; Infrastructure Lead; Application Owner; Back End Developer Consultant | 64h |
| 21 | 1.1.3.3.7 | Plan and Confiure Azure Active Directory |  | 2d | 2014-11-21 | 2014-11-25 | 20 | 0d |  | Application Owner; Back End Developer Consultant; Infrastructure Lead; IT Consultant | 64h |
| 22 | 1.1.3.3.8 | Plan and Configure Deployment Strategy |  | 1d | 2014-11-25 | 2014-11-26 | 21 | 0d |  | Back End Developer Consultant; Infrastructure Lead; Application Owner; IT Consultant | 32h |
| 23 | 1.1.3.3.9 | Integrate Back end into Mobile App |  | 2d | 2014-11-26 | 2014-11-28 | 22 | 0d |  | Back End Developer Consultant; Mobile Developer Consultant; Application Owner | 48h |
| 24 | 1.1.3.4 | Func spec dev |  | 1d | 2014-11-28 | 2014-12-01 | 23 | 0d | start no earlier than 2014-01-09 | Back End Developer Consultant; Application Owner; Mobile Developer Consultant | 24h |
| 25 | 1.1.3.5 | Design complete | milestone | 0d | 2014-12-01 | 2014-12-01 | 24 | 0d | start no earlier than 2014-01-10 | Application Owner; Project Sponsor |  |

| ID | WBS | Task | Type | Duration | Start | Finish | Predecessors | Total slack | Resources | Work |
| --- | --- | --- | --- | --- | --- | --- | --- | --- | --- | --- |
| 26 | 2 | **Mobile App Deployment Engagement** |  | 32.25d | 2014-12-01 | 2015-01-14 | 1 | 0d |  | 756h |
| 27 | 2.1 | **Governance** |  | 1.36d | 2014-12-01 | 2014-12-03 |  | 30.89d |  | 12h |
| 28 | 2.1.1 | Engagement management |  | 1.36d | 2014-12-01 | 2014-12-03 |  | 30.89d | Engagement Manager [10%]; Project Sponsor | 12h |
| 29 | 2.2 | **Envision** |  | 1d | 2014-12-01 | 2014-12-02 |  | 0d |  | 60h |
| 30 | 2.2.1 | Pre-project preparation |  | 0.5d | 2014-12-01 | 2014-12-02 |  | 0d | Project Manager; Application Owner; Back End Developer Consultant; Engagement Manager; Project Sponsor | 20h |
| 31 | 2.2.2 | Project kickoff |  | 0.5d | 2014-12-02 | 2014-12-02 | 30 | 0d | IT Consultant; Application Owner; Back End Developer Consultant; DBA Consultant; DBA Lead; Engagement Manager; Infrastructure Lead; Mobile Developer Consultant; Project Manager; Project Sponsor | 40h |
| 32 | 2.2.3 | Microsoft Partner Technical Consultant Check-in | milestone | 0d | 2014-12-02 | 2014-12-02 | 31 | 0d | IT Consultant; Back End Developer Consultant; Mobile Developer Consultant; Infrastructure Lead; Application Owner; DBA Consultant; DBA Lead |  |
| 33 | 2.3 | **Plan** |  | 8.5d | 2014-12-02 | 2014-12-15 | 29 | 0d |  | 240h |
| 34 | 2.3.1 | **App back end design workshop** |  | 7.5d | 2014-12-02 | 2014-12-12 |  | 0d |  | 208h |
| 35 | 2.3.1.1 | Plan Microsoft Azure RBAC |  | 0.5d | 2014-12-02 | 2014-12-03 |  | 0d | Back End Developer Consultant; Infrastructure Lead; Application Owner | 12h |
| 36 | 2.3.1.2 | Plan Storage Account Best Practices |  | 0.5d | 2014-12-03 | 2014-12-03 | 35 | 0d | IT Consultant; Back End Developer Consultant | 8h |
| 37 | 2.3.1.3 | Plan Azure Mobile Services Implentation |  | 1d | 2014-12-03 | 2014-12-04 | 36 | 0d | Back End Developer Consultant; Mobile Developer Consultant; Application Owner | 24h |
| 38 | 2.3.1.4 | Plan Azure SQL Database & Data Partitioning |  | 1d | 2014-12-04 | 2014-12-05 | 37 | 0d | DBA Lead; Back End Developer Consultant; DBA Consultant; Application Owner; Mobile Developer Consultant | 40h |
| 39 | 2.3.1.5 | Plan Notification Hubs |  | 0.5d | 2014-12-05 | 2014-12-08 | 38 | 0d | Back End Developer Consultant; Application Owner; Mobile Developer Consultant | 12h |
| 40 | 2.3.1.6 | Plan App Service Usage |  | 1d | 2014-12-08 | 2014-12-09 | 39 | 0d | Back End Developer Consultant; Infrastructure Lead; IT Consultant; Application Owner | 32h |
| 41 | 2.3.1.7 | Plan Azure Active Directory |  | 1d | 2014-12-09 | 2014-12-10 | 40 | 0d | Application Owner; Back End Developer Consultant; Infrastructure Lead; IT Consultant | 32h |
| 42 | 2.3.1.8 | Plan Deployment Strategy |  | 1d | 2014-12-10 | 2014-12-11 | 41 | 0d | Back End Developer Consultant; Infrastructure Lead; Application Owner | 24h |
| 43 | 2.3.1.9 | Plan Integration of back end into Mobile App |  | 1d | 2014-12-11 | 2014-12-12 | 42 | 0d | Back End Developer Consultant; Mobile Developer Consultant; Application Owner | 24h |
| 44 | 2.3.2 | Func spec dev |  | 1d | 2014-12-12 | 2014-12-15 | 43 | 0d | IT Consultant; Back End Developer Consultant; Infrastructure Lead; Project Manager | 32h |
| 45 | 2.3.3 | Microsoft Partner Technical Consultant Check-in | milestone | 0d | 2014-12-15 | 2014-12-15 | 44 | 0d | IT Consultant; Microsoft Partner Technical Consultant; Application Owner; Back End Developer Consultant |  |
| 46 | 2.3.4 | Design complete | milestone | 0d | 2014-12-15 | 2014-12-15 | 45 | 0d |  |  |
| 47 | 2.4 | **Build** |  | 18.25d | 2014-12-15 | 2015-01-08 | 33, 11 | 0d |  | 308h |
| 48 | 2.4.1 | **App back end build** |  | 18.25d | 2014-12-15 | 2015-01-08 |  | 0d |  | 308h |
| 49 | 2.4.1.1 | Configure Microsoft Azure RBAC |  | 0.5d | 2014-12-15 | 2014-12-15 |  | 0d | IT Consultant; Back End Developer Consultant | 8h |
| 50 | 2.4.1.2 | Configure Storage Account |  | 0.5d | 2014-12-15 | 2014-12-16 | 49 | 0d | IT Consultant; Back End Developer Consultant | 8h |
| 51 | 2.4.1.3 | Configure and Implement Azure Mobile Services |  | 3d | 2014-12-16 | 2014-12-19 | 50 | 0d | Back End Developer Consultant; Mobile Developer Consultant | 48h |
| 52 | 2.4.1.4 | Configure and Implement Azure SQL Database |  | 3d | 2014-12-19 | 2014-12-24 | 51 | 0d | DBA Consultant; Back End Developer Consultant | 48h |
| 53 | 2.4.1.5 | Configure and Implement Notification Hubs |  | 1d | 2014-12-24 | 2014-12-25 | 52 | 0d | Back End Developer Consultant; Mobile Developer Consultant | 16h |
| 54 | 2.4.1.6 | Confiure and Implement App Service |  | 3d | 2014-12-25 | 2014-12-30 | 53 | 0d | Back End Developer Consultant; IT Consultant | 48h |
| 55 | 2.4.1.7 | Confiure and Implement Azure Active Directory |  | 3d | 2014-12-30 | 2015-01-02 | 54 | 0d | Back End Developer Consultant; IT Consultant | 48h |
| 56 | 2.4.1.8 | Configure and Implement Deployment Strategy |  | 2d | 2015-01-02 | 2015-01-06 | 55 | 0d | Application Owner; Back End Developer Consultant; IT Consultant | 48h |
| 57 | 2.4.1.9 | Integrate Back end into Mobile App |  | 2d | 2015-01-06 | 2015-01-08 | 56 | 0d | Back End Developer Consultant; Mobile Developer Consultant | 32h |
| 58 | 2.4.1.10 | Set Up Deployment Tools |  | 0.25d | 2015-01-08 | 2015-01-08 | 57 | 0d | Back End Developer Consultant; IT Consultant | 4h |
| 59 | 2.4.2 | Microsoft Partner Technical Consultant Check-in | milestone | 0d | 2015-01-08 | 2015-01-08 | 58 | 0d | IT Consultant; Microsoft Partner Technical Consultant; Application Owner; Back End Developer Consultant |  |
| 60 | 2.4.3 | Solution built | milestone | 0d | 2015-01-08 | 2015-01-08 | 59 | 0d |  |  |

| ID | WBS | Task | Type | Duration | Start | Finish | Predecessors | Total slack | Resources | Work |
| --- | --- | --- | --- | --- | --- | --- | --- | --- | --- | --- |
| 61 | 2.5 | **Stabilize** |  | 1.5d | 2015-01-08 | 2015-01-09 | 47 | 0d |  | 36h |
| 62 | 2.5.1 | Test access to application Web Services in different Devices |  | 0.5d | 2015-01-08 | 2015-01-08 |  | 0d | Application Owner; Back End Developer Consultant; Mobile Developer Consultant | 12h |
| 63 | 2.5.2 | Test Load balancing requirement |  | 0.5d | 2015-01-08 | 2015-01-09 | 62 | 0d | Application Owner; Back End Developer Consultant; Mobile Developer Consultant | 12h |
| 64 | 2.5.3 | Test Deployment process through PowerShell/Visual Studio Online |  | 0.5d | 2015-01-09 | 2015-01-09 | 63 | 0d | Back End Developer Consultant; Application Owner; Mobile Developer Consultant | 12h |
| 65 | 2.5.4 | Solution validated | milestone | 0d | 2015-01-09 | 2015-01-09 | 64 | 0d |  |  |
| 66 | 2.6 | **Deploy** |  | 3d | 2015-01-09 | 2015-01-14 | 61 | 0d |  | 100h |
| 67 | 2.6.1 | **Hand off to dev ops** |  | 2.5d | 2015-01-09 | 2015-01-14 |  | 0d |  | 60h |
| 68 | 2.6.1.1 | Solution walk through with app server ops teams |  | 0.5d | 2015-01-09 | 2015-01-12 |  | 0d | IT Consultant; Application Owner; Back End Developer Consultant | 12h |
| 69 | 2.6.1.2 | Go live support |  | 2d | 2015-01-12 | 2015-01-14 | 68 | 0d | IT Consultant; Application Owner; Back End Developer Consultant | 48h |
| 70 | 2.6.2 | Project close out meeting |  | 0.5d | 2015-01-14 | 2015-01-14 | 67 | 0d | IT Consultant; Back End Developer Consultant; Engagement Manager; Infrastructure Lead; Project Manager; Project Sponsor; Application Owner; DBA Consultant; DBA Lead; Mobile Developer Consultant | 40h |
| 71 | 2.6.3 | Solution deployed | milestone | 0d | 2015-01-14 | 2015-01-14 | 70 | 0d |  |  |
