# 8 - Deployment Guidance - Project Milestones

Schedule from MS Project, 2014-11-03 to 2014-12-31.

## Calendars

- Standard: Mon-Fri 08:00-12:00, 13:00-17:00; Sat-Sun off.

## Resources

| Resource | Group |
| --- | --- |
| Project Sponsor | Customer |
| IT Consultant | Partner |
| Engagement Manager | Partner |
| Microsoft Partner Technical Consultant | MS |
| Project Manager | Customer |
| Infrastructure Lead | Customer |
| Lab Operations Lead | Customer |

## Schedule

| ID | WBS | Task | Type | Duration | Start | Finish | Predecessors | Total slack | Constraint | Resources | Work |
| --- | --- | --- | --- | --- | --- | --- | --- | --- | --- | --- | --- |
| 1 | 1 | **Sharepoint Pre-Sales Engagement** |  | 16.5d? | 2014-11-03 | 2014-11-25 |  | 0d |  |  | 257.6h |
| 2 | 1.1 | **Governance** |  | 16.5d? | 2014-11-03 | 2014-11-25 |  | 0d |  |  | 257.6h |
| 3 | 1.1.1 | Engagement management |  | 5d | 2014-11-03 | 2014-11-07 |  | 0d |  | Engagement Manager [10%] | 4h |
| 4 | 1.1.2 | **Envision** |  | 4.5d? | 2014-11-10 | 2014-11-14 |  | 0d |  |  | 61.6h |
| 5 | 1.1.2.1 | Pre-Engagement preparation |  | 1d | 2014-11-10 | 2014-11-10 | 3 | 0d |  | IT Consultant; Project Manager | 16h |
| 6 | 1.1.2.2 | Engagement kickoff |  | 0.1d | 2014-11-11 | 2014-11-11 | 5 | 0d |  | Engagement Manager; Infrastructure Lead; IT Consultant; Lab Operations Lead; Microsoft Partner Technical Consultant; Project Manager; Project Sponsor | 5.6h |
| 7 | 1.1.2.3 | Solution Value Proposition |  | 0.2d | 2014-11-11 | 2014-11-11 | 6 | 0d |  | Engagement Manager; Project Sponsor | 3.2h |
| 8 | 1.1.2.4 | Microsoft Partner Technical Consultant Check-in |  | 1d? | 2014-11-11 | 2014-11-12 | 7 | 0d |  |  |  |
| 9 | 1.1.2.5 | Cost Planning |  | 0.2d | 2014-11-12 | 2014-11-12 | 8 | 0d |  | Engagement Manager; IT Consultant; Infrastructure Lead | 4.8h |
| 10 | 1.1.2.6 | Technical Assessment |  | 2d | 2014-11-12 | 2014-11-14 | 9 | 0d |  | Infrastructure Lead; IT Consultant | 32h |
| 11 | 1.1.3 | **Plan** |  | 7d | 2014-11-14 | 2014-11-25 | 4 | 0d |  |  | 192h |
| 12 | 1.1.3.1 | Microsoft Partner Technical Consultant Check-in | milestone | 0d | 2014-11-14 | 2014-11-14 |  | 0d | start no earlier than 2014-01-09 | IT Consultant; Microsoft Partner Technical Consultant |  |
| 13 | 1.1.3.2 | Architecture |  | 2d | 2014-11-14 | 2014-11-18 | 12 | 0d |  | Infrastructure Lead; IT Consultant | 32h |
| 14 | 1.1.3.3 | **Proof of Concept** |  | 4.5d | 2014-11-18 | 2014-11-24 |  | 0d |  |  | 144h |
| 15 | 1.1.3.3.1 | Configure Microsoft Azure |  | 0.5d | 2014-11-18 | 2014-11-18 | 13 | 0d |  | IT Consultant; Infrastructure Lead; Lab Operations Lead; Project Manager | 16h |
| 16 | 1.1.3.3.2 | Configure Domain Controllers |  | 0.5d | 2014-11-19 | 2014-11-19 | 15 | 0d |  | IT Consultant; Infrastructure Lead; Lab Operations Lead; Project Manager | 16h |
| 17 | 1.1.3.3.3 | Configure SQL Server Infrastructure |  | 1d | 2014-11-19 | 2014-11-20 | 16 | 0d |  | IT Consultant; Infrastructure Lead; Lab Operations Lead; Project Manager | 32h |
| 18 | 1.1.3.3.4 | Configure Sharepoint Server |  | 2d | 2014-11-20 | 2014-11-24 | 17 | 0d |  | IT Consultant; Infrastructure Lead; Lab Operations Lead; Project Manager | 64h |
| 19 | 1.1.3.3.5 | Configure Deployment Strategy |  | 0.5d | 2014-11-24 | 2014-11-24 | 18 | 0d |  | IT Consultant; Infrastructure Lead; Lab Operations Lead; Project Manager | 16h |
| 20 | 1.1.3.4 | Func spec dev |  | 0.5d | 2014-11-25 | 2014-11-25 | 19 | 0d | start no earlier than 2014-01-09 | IT Consultant; Infrastructure Lead; Lab Operations Lead; Project Manager | 16h |
| 21 | 1.1.3.5 | Design complete | milestone | 0d | 2014-11-14 | 2014-11-14 |  | 7d | start no earlier than 2014-01-10 |  |  |
| 22 | 2 | **Sharepoint Deployment Engagement** |  | 26.5d | 2014-11-25 | 2014-12-31 | 1 | 0d |  |  | 552h |
| 23 | 2.1 | **Governance** |  | 15d | 2014-11-25 | 2014-12-16 |  | 11.5d |  |  | 12h |
| 24 | 2.1.1 | Engagement management |  | 15d | 2014-11-25 | 2014-12-16 |  | 11.5d |  | Engagement Manager [10%] | 12h |

| ID | WBS | Task | Type | Duration | Start | Finish | Predecessors | Total slack | Resources | Work |
| --- | --- | --- | --- | --- | --- | --- | --- | --- | --- | --- |
| 25 | 2.2 | **Envision** |  | 1d | 2014-11-25 | 2014-11-26 |  | 0d |  | 16h |
| 26 | 2.2.1 | Pre-project preparation |  | 0.5d | 2014-11-25 | 2014-11-25 |  | 0d | IT Consultant; Infrastructure Lead | 8h |
| 27 | 2.2.2 | Project kickoff |  | 0.5d | 2014-11-26 | 2014-11-26 | 26 | 0d | IT Consultant; Infrastructure Lead | 8h |
| 28 | 2.2.3 | Microsoft Partner Technical Consultant Check-in | milestone | 0d | 2014-11-25 | 2014-11-25 |  | 1d | IT Consultant; Microsoft Partner Technical Consultant |  |
| 29 | 2.3 | **Plan** |  | 8.5d | 2014-11-26 | 2014-12-08 | 25 | 0d |  | 272h |
| 30 | 2.3.1 | **Design workshop** |  | 6.5d | 2014-11-26 | 2014-12-04 |  | 0d |  | 208h |
| 31 | 2.3.1.1 | Microsoft Azure IaaS Configuration |  | 1d | 2014-11-26 | 2014-11-27 |  | 0d | IT Consultant; Infrastructure Lead; Lab Operations Lead; Project Manager | 32h |
| 32 | 2.3.1.2 | Active Directory Configuration |  | 0.5d | 2014-11-27 | 2014-11-27 | 31 | 0d | IT Consultant; Infrastructure Lead; Lab Operations Lead; Project Manager | 16h |
| 33 | 2.3.1.3 | SQL Server Configuration |  | 1d | 2014-11-28 | 2014-11-28 | 32 | 0d | IT Consultant; Infrastructure Lead; Lab Operations Lead; Project Manager | 32h |
| 34 | 2.3.1.4 | Sharepoint Server Configuration |  | 3d | 2014-12-01 | 2014-12-03 | 33 | 0d | IT Consultant; Infrastructure Lead; Lab Operations Lead; Project Manager | 96h |
| 35 | 2.3.1.5 | Deployment Strategy |  | 1d | 2014-12-04 | 2014-12-04 | 34 | 0d | IT Consultant; Infrastructure Lead; Lab Operations Lead; Project Manager | 32h |
| 36 | 2.3.2 | Func spec dev |  | 2d | 2014-12-05 | 2014-12-08 | 30 | 0d | IT Consultant; Infrastructure Lead; Lab Operations Lead; Project Manager | 64h |
| 37 | 2.3.3 | Microsoft Partner Technical Consultant Check-in | milestone | 0d | 2014-11-26 | 2014-11-26 |  | 8.5d | IT Consultant; Microsoft Partner Technical Consultant |  |
| 38 | 2.3.4 | Design complete | milestone | 0d | 2014-11-26 | 2014-11-26 |  | 8.5d |  |  |
| 39 | 2.4 | **Build** |  | 9.5d | 2014-12-09 | 2014-12-22 | 29, 11 | 0d |  | 152h |
| 40 | 2.4.1 | **Infrastructure build** |  | 9.5d | 2014-12-09 | 2014-12-22 |  | 0d |  | 152h |
| 41 | 2.4.1.1 | Configure Microsoft Azure IaaS |  | 0.5d | 2014-12-09 | 2014-12-09 |  | 0d | IT Consultant; Infrastructure Lead | 8h |
| 42 | 2.4.1.2 | Configure Active Directory |  | 1d | 2014-12-09 | 2014-12-10 | 41 | 0d | IT Consultant; Infrastructure Lead | 16h |
| 43 | 2.4.1.3 | Configure SQL Server |  | 2d | 2014-12-10 | 2014-12-12 | 42 | 0d | Infrastructure Lead; IT Consultant | 32h |
| 44 | 2.4.1.4 | Configure Sharepoint Server |  | 6d | 2014-12-12 | 2014-12-22 | 43 | 0d | IT Consultant; Infrastructure Lead | 96h |
| 45 | 2.4.2 | Microsoft Partner Technical Consultant Check-in | milestone | 0d | 2014-12-22 | 2014-12-22 | 44 | 0d | IT Consultant; Microsoft Partner Technical Consultant |  |
| 46 | 2.4.3 | Solution built | milestone | 0d | 2014-12-22 | 2014-12-22 | 40 | 0d |  |  |
| 47 | 2.5 | **Stabilize** |  | 4d | 2014-12-22 | 2014-12-26 | 39 | 0d |  | 40h |
| 48 | 2.5.1 | Connectivity validation |  | 1d | 2014-12-22 | 2014-12-23 |  | 0d | IT Consultant; Lab Operations Lead | 16h |
| 49 | 2.5.2 | Test Solution |  | 3d | 2014-12-23 | 2014-12-26 | 48 | 0d | IT Consultant | 24h |
| 50 | 2.5.3 | Solution validated | milestone | 0d | 2014-12-22 | 2014-12-22 |  | 4d |  |  |

| ID | WBS | Task | Type | Duration | Start | Finish | Predecessors | Total slack | Resources | Work |
| --- | --- | --- | --- | --- | --- | --- | --- | --- | --- | --- |
| 51 | 2.6 | **Deploy** |  | 3.5d | 2014-12-26 | 2014-12-31 | 47 | 0d |  | 60h |
| 52 | 2.6.1 | **Hand off to Ops** |  | 3d | 2014-12-26 | 2014-12-31 |  | 0d |  | 32h |
| 53 | 2.6.1.1 | Solution walk through with ops teams |  | 1d | 2014-12-26 | 2014-12-29 |  | 0d | IT Consultant; Lab Operations Lead | 16h |
| 54 | 2.6.1.2 | Go live support |  | 2d | 2014-12-29 | 2014-12-31 | 53 | 0d | IT Consultant | 16h |
| 55 | 2.6.2 | Project close out meeting |  | 0.5d | 2014-12-31 | 2014-12-31 | 52 | 0d | IT Consultant; Engagement Manager; Infrastructure Lead; Lab Operations Lead; Microsoft Partner Technical Consultant; Project Manager; Project Sponsor | 28h |
| 56 | 2.6.3 | Solution deployed | milestone | 0d | 2014-12-31 | 2014-12-31 | 55 | 0d |  |  |
